# WBS PROYEK 2015#

How a schedule from MS Project changed from version to version. A marks actual dates.

## Version 1 (saved 2015-09-29, file WBS PROYEK 2015.mpp)

Note of the change: ok

| ID | WBS | Task | Duration | Start | Finish | Total float |
| --- | --- | --- | --- | --- | --- | --- |
| 1 | 1 | **Analisis dan Desain Sistem** | 1d? | 2015-06-15 | 2015-06-15 | 0d |
| 2 |  | Menganalisis Sistem Kepegawaian dengan melakukan wawancara kepada pihak yang ditunjuk | 1d? | 2015-06-15 | 2015-06-15 |  |
| 3 |  | Membuat Statement of Purpose, Event List, dan Context Diagram | 1d? | 2015-06-15 | 2015-06-15 |  |
| 4 |  | Membuat Data Flow Diagram (DFD) Levelled | 1d? | 2015-06-15 | 2015-06-15 |  |
| 5 |  | Membuat Kamus Data | 1d? | 2015-06-15 | 2015-06-15 |  |
| 6 |  | Membuat Process Specification | 1d? | 2015-06-15 | 2015-06-15 |  |
| 7 |  | Membuat Entity Relationship Diagram (ERD) | 1d? | 2015-06-15 | 2015-06-15 |  |
| 8 |  | Dokumentasi Analisis & Desain Sistem | 1d? | 2015-06-15 | 2015-06-15 |  |
| 9 | 2 | **Desain Aplikasi** | 1d? | 2015-06-15 | 2015-06-15 | 0d |
| 10 |  | Membuat Desain Menu Aplikasi + Form Entry | 1d? | 2015-06-15 | 2015-06-15 |  |
| 11 |  | Membuat Desain Report + Form Report | 1d? | 2015-06-15 | 2015-06-15 |  |
| 12 |  | Dokumentasi Desain Aplikasi | 1d? | 2015-06-15 | 2015-06-15 |  |
| 13 | 3 | **Programming** | 1d? | 2015-06-15 | 2015-06-15 | 0d |
| 14 |  | Programming (Back End & Front End) | 1d? | 2015-06-15 | 2015-06-15 |  |
| 15 |  | Dokumentasi program (Back End & Front End) | 1d? | 2015-06-15 | 2015-06-15 |  |
| 16 | 4 | **Testing Program** | 1d? | 2015-06-15 | 2015-06-15 | 0d |
| 17 |  | Melakukan test terhadap program | 1d? | 2015-06-15 | 2015-06-15 |  |
| 18 |  | Memberikan catatan list perbaikan | 1d? | 2015-06-15 | 2015-06-15 |  |
| 19 |  | Dokumentasi testing program | 1d? | 2015-06-15 | 2015-06-15 |  |
| 20 | 5 | **Instalasi Program** | 1d? | 2015-06-15 | 2015-06-15 | 0d |
| 21 |  | Setting infrastruktur & software pendukung | 1d? | 2015-06-15 | 2015-06-15 |  |
| 22 |  | Instalasi program ke komputer user | 1d? | 2015-06-15 | 2015-06-15 |  |
| 23 | 6 | **Training User / SDM** | 1d? | 2015-06-15 | 2015-06-15 | 0d |
| 24 |  | Melakukan pelatihan kepada user | 1d? | 2015-06-15 | 2015-06-15 |  |
| 25 | 7 | **Dokumentasi** | 1d? | 2015-06-15 | 2015-06-15 | 0d |
| 26 |  | Desain Spesifikasi Sistem | 1d? | 2015-06-15 | 2015-06-15 |  |
| 27 |  | Dokumentasi SOP | 1d? | 2015-06-15 | 2015-06-15 |  |
| 28 |  | Dokumen Administrasi Proyek | 1d? | 2015-06-15 | 2015-06-15 |  |
| 29 |  | User dan Admin Manual + Dok. Program | 1d? | 2015-06-15 | 2015-06-15 |  |
| 30 |  | Dokumen Manajemen Proyek | 1d? | 2015-06-15 | 2015-06-15 |  |
| 31 | 8 | **Maintenance** | 1d? | 2015-06-15 | 2015-06-15 | 0d |
| 32 |  | Pemeliharaan & Perbaikan Sistem | 1d? | 2015-06-15 | 2015-06-15 |  |
| 33 | 9 | **Administrasi** | 1d? | 2015-06-15 | 2015-06-15 | 0d |
| 34 |  | Melakukan administrasi proyek & mendokumentasikannya | 1d? | 2015-06-15 | 2015-06-15 |  |

## Version 2 (saved 2015-09-29, file JADWAL PROYEK 2015.mpp)

Note of the change: ok

Last finish 2015-06-15 → 2015-11-04 (+142d).

Changed:

| ID | Task | Start | Finish | Duration | Predecessors |
| --- | --- | --- | --- | --- | --- |
| 1 | **Analisis dan Desain Sistem** |  | 2015-06-15 → 2015-06-25 (+10d) | 1d? → 9d |  |
| 2 | Menganalisis Sistem Kepegawaian dengan melakukan wawancara kepada pihak yang ditunjuk |  | 2015-06-15 → 2015-06-16 (+1d) | 1d? → 2d |  |
| 3 | Membuat Statement of Purpose, Event List, dan Context Diagram | 2015-06-15 → 2015-06-17 (+2d) | 2015-06-15 → 2015-06-17 (+2d) | 1d? → 1d | none → 2 |
| 4 | Membuat Data Flow Diagram (DFD) Levelled | 2015-06-15 → 2015-06-18 (+3d) | 2015-06-15 → 2015-06-18 (+3d) | 1d? → 1d | none → 3 |
| 5 | Membuat Kamus Data | 2015-06-15 → 2015-06-19 (+4d) | 2015-06-15 → 2015-06-19 (+4d) | 1d? → 1d | none → 4 |
| 6 | Membuat Process Specification | 2015-06-15 → 2015-06-22 (+7d) | 2015-06-15 → 2015-06-22 (+7d) | 1d? → 1d | none → 5 |
| 7 | Membuat Entity Relationship Diagram (ERD) | 2015-06-15 → 2015-06-23 (+8d) | 2015-06-15 → 2015-06-23 (+8d) | 1d? → 1d | none → 6 |
| 8 | Dokumentasi Analisis & Desain Sistem | 2015-06-15 → 2015-06-24 (+9d) | 2015-06-15 → 2015-06-25 (+10d) | 1d? → 2d | none → 7 |
| 9 | **Desain Aplikasi** | 2015-06-15 → 2015-06-29 (+14d) | 2015-06-15 → 2015-07-07 (+22d) | 1d? → 7d |  |
| 10 | Membuat Desain Menu Aplikasi + Form Entry | 2015-06-15 → 2015-06-29 (+14d) | 2015-06-15 → 2015-06-30 (+15d) | 1d? → 2d | none → 8 |
| 11 | Membuat Desain Report + Form Report | 2015-06-15 → 2015-07-01 (+16d) | 2015-06-15 → 2015-07-02 (+17d) | 1d? → 2d | none → 10 |
| 12 | Dokumentasi Desain Aplikasi | 2015-06-15 → 2015-07-03 (+18d) | 2015-06-15 → 2015-07-07 (+22d) | 1d? → 3d | none → 11 |
| 13 | **Programming** | 2015-06-15 → 2015-07-08 (+23d) | 2015-06-15 → 2015-09-30 (+107d) | 1d? → 55d |  |
| 14 | Programming (Back End & Front End) | 2015-06-15 → 2015-07-08 (+23d) | 2015-06-15 → 2015-09-22 (+99d) | 1d? → 50d | none → 12 |
| 15 | Dokumentasi program (Back End & Front End) | 2015-06-15 → 2015-09-23 (+100d) | 2015-06-15 → 2015-09-30 (+107d) | 1d? → 5d | none → 14 |
| 16 | **Testing Program** | 2015-06-15 → 2015-09-23 (+100d) | 2015-06-15 → 2015-09-30 (+107d) | 1d? → 5d |  |
| 17 | Melakukan test terhadap program | 2015-06-15 → 2015-09-23 (+100d) | 2015-06-15 → 2015-09-25 (+102d) | 1d? → 2d | none → 14 |
| 18 | Memberikan catatan list perbaikan | 2015-06-15 → 2015-09-28 (+105d) | 2015-06-15 → 2015-09-28 (+105d) | 1d? → 1d | none → 17 |
| 19 | Dokumentasi testing program | 2015-06-15 → 2015-09-29 (+106d) | 2015-06-15 → 2015-09-30 (+107d) | 1d? → 2d | none → 18 |
| 20 | **Instalasi Program** | 2015-06-15 → 2015-10-01 (+108d) | 2015-06-15 → 2015-10-02 (+109d) | 1d? → 2d |  |
| 21 | Setting infrastruktur & software pendukung | 2015-06-15 → 2015-10-01 (+108d) | 2015-06-15 → 2015-10-01 (+108d) | 1d? → 1d | none → 19 |
| 22 | Instalasi program ke komputer user | 2015-06-15 → 2015-10-02 (+109d) | 2015-06-15 → 2015-10-02 (+109d) | 1d? → 1d | none → 21 |
| 23 | **Training User / SDM** | 2015-06-15 → 2015-10-05 (+112d) | 2015-06-15 → 2015-10-06 (+113d) | 1d? → 2d |  |
| 24 | Melakukan pelatihan kepada user | 2015-06-15 → 2015-10-05 (+112d) | 2015-06-15 → 2015-10-06 (+113d) | 1d? → 2d | none → 22 |
| 25 | **Dokumentasi** | 2015-06-15 → 2015-06-29 (+14d) | 2015-06-15 → 2015-10-12 (+119d) | 1d? → 70d |  |
| 26 | Desain Spesifikasi Sistem | 2015-06-15 → 2015-06-29 (+14d) | 2015-06-15 → 2015-07-23 (+38d) | 1d? → 15d | none → 8 |
| 27 | Dokumentasi SOP | 2015-06-15 → 2015-07-24 (+39d) | 2015-06-15 → 2015-08-06 (+52d) | 1d? → 10d | none → 26 |
| 28 | Dokumen Administrasi Proyek | 2015-06-15 → 2015-08-07 (+53d) | 2015-06-15 → 2015-08-19 (+65d) | 1d? → 8d | none → 27 |
| 29 | User dan Admin Manual + Dok. Program | 2015-06-15 → 2015-08-20 (+66d) | 2015-06-15 → 2015-09-23 (+100d) | 1d? → 25d | none → 28 |
| 30 | Dokumen Manajemen Proyek | 2015-06-15 → 2015-09-25 (+102d) | 2015-06-15 → 2015-10-12 (+119d) | 1d? → 12d | none → 29 |
| 31 | **Maintenance** | 2015-06-15 → 2015-10-07 (+114d) | 2015-06-15 → 2015-11-04 (+142d) | 1d? → 20d |  |
| 32 | Pemeliharaan & Perbaikan Sistem | 2015-06-15 → 2015-10-07 (+114d) | 2015-06-15 → 2015-11-04 (+142d) | 1d? → 20d | none → 24 |
| 33 | **Administrasi** | 2015-06-15 → 2015-06-12 (-3d) | 2015-06-15 → 2015-10-12 (+119d) | 1d? → 80d |  |
| 34 | Melakukan administrasi proyek & mendokumentasikannya | 2015-06-15 → 2015-06-12 (-3d) | 2015-06-15 → 2015-10-12 (+119d) | 1d? → 80d |  |

## Version 3 (saved 2015-09-29, file KEMAJUAN1 PROYEK 2015.mpp)

Note of the change: ok

Last finish stays 2015-11-04. Complete tasks 0 → 10.

Added:

| ID | Task | Duration | Start | Finish |
| --- | --- | --- | --- | --- |
| 35 | **Biaya Lain-lain** | 1d? | 2015-06-15 | 2015-06-15 |
| 36 | Biaya Bahan & Pencetakan | 1d? | 2015-06-15 | 2015-06-15 |
| 37 | Perubahan Analisis (bila diperlukan) | 1d? | 2015-06-15 | 2015-06-15 |
| 38 | Perubahan Bentuk Desain | 1d? | 2015-06-15 | 2015-06-15 |
| 39 | Penambahan Program (bila diperlukan) | 1d? | 2015-06-15 | 2015-06-15 |
| 40 | Biaya Cadangan Operasional | 1d? | 2015-06-15 | 2015-06-15 |
| 41 | Biaya Cadangan Tak Terduga | 1d? | 2015-06-15 | 2015-06-15 |
| 42 | Biaya Finger Print & Infrastruktur lainnya | 1d? | 2015-06-15 | 2015-06-15 |

Changed:

| ID | Task | Start | Finish | Complete | Total float | Other |
| --- | --- | --- | --- | --- | --- | --- |
| 1 | **Analisis dan Desain Sistem** | 2015-06-15 A | 2015-06-25 A | 0% → 100% | 0d → none | baseline start none → 2015-06-15; baseline finish none → 2015-06-25 |
| 2 | Menganalisis Sistem Kepegawaian dengan melakukan wawancara kepada pihak yang ditunjuk | 2015-06-15 A | 2015-06-16 A | 0% → 100% |  | baseline start none → 2015-06-15; baseline finish none → 2015-06-16 |
| 3 | Membuat Statement of Purpose, Event List, dan Context Diagram | 2015-06-17 A | 2015-06-17 A | 0% → 100% |  | baseline start none → 2015-06-17; baseline finish none → 2015-06-17 |
| 4 | Membuat Data Flow Diagram (DFD) Levelled | 2015-06-18 A | 2015-06-18 A | 0% → 100% |  | baseline start none → 2015-06-18; baseline finish none → 2015-06-18 |
| 5 | Membuat Kamus Data | 2015-06-19 A | 2015-06-19 A | 0% → 100% |  | baseline start none → 2015-06-19; baseline finish none → 2015-06-19 |
| 6 | Membuat Process Specification | 2015-06-22 A | 2015-06-22 A | 0% → 100% |  | baseline start none → 2015-06-22; baseline finish none → 2015-06-22 |
| 7 | Membuat Entity Relationship Diagram (ERD) | 2015-06-23 A | 2015-06-23 A | 0% → 100% |  | baseline start none → 2015-06-23; baseline finish none → 2015-06-23 |
| 8 | Dokumentasi Analisis & Desain Sistem | 2015-06-24 A | 2015-06-25 A | 0% → 100% |  | baseline start none → 2015-06-24; baseline finish none → 2015-06-25 |
| 9 | **Desain Aplikasi** | 2015-06-29 A | 2015-07-07 A | 0% → 100% | 0d → none | baseline start none → 2015-06-29; baseline finish none → 2015-07-07 |
| 10 | Membuat Desain Menu Aplikasi + Form Entry | 2015-06-29 A | 2015-06-30 A | 0% → 100% |  | baseline start none → 2015-06-29; baseline finish none → 2015-06-30 |
| 11 | Membuat Desain Report + Form Report | 2015-07-01 A | 2015-07-02 A | 0% → 100% |  | baseline start none → 2015-07-01; baseline finish none → 2015-07-02 |
| 12 | Dokumentasi Desain Aplikasi | 2015-07-03 A | 2015-07-07 A | 0% → 100% |  | baseline start none → 2015-07-03; baseline finish none → 2015-07-07 |
| 13 | **Programming** | 2015-07-08 A |  | 0% → 80% |  | baseline start none → 2015-07-08; baseline finish none → 2015-09-30 |
| 14 | Programming (Back End & Front End) | 2015-07-08 A |  | 0% → 88% |  | baseline start none → 2015-07-08; baseline finish none → 2015-09-22 |
| 15 | Dokumentasi program (Back End & Front End) |  |  |  |  | baseline start none → 2015-09-23; baseline finish none → 2015-09-30 |
| 16 | **Testing Program** |  |  |  |  | baseline start none → 2015-09-23; baseline finish none → 2015-09-30 |
| 17 | Melakukan test terhadap program |  |  |  |  | baseline start none → 2015-09-23; baseline finish none → 2015-09-25 |
| 18 | Memberikan catatan list perbaikan |  |  |  |  | baseline start none → 2015-09-28; baseline finish none → 2015-09-28 |
| 19 | Dokumentasi testing program |  |  |  |  | baseline start none → 2015-09-29; baseline finish none → 2015-09-30 |
| 20 | **Instalasi Program** |  |  |  |  | baseline start none → 2015-10-01; baseline finish none → 2015-10-02 |
| 21 | Setting infrastruktur & software pendukung |  |  |  |  | baseline start none → 2015-10-01; baseline finish none → 2015-10-01 |
| 22 | Instalasi program ke komputer user |  |  |  |  | baseline start none → 2015-10-02; baseline finish none → 2015-10-02 |
| 23 | **Training User / SDM** |  |  |  |  | baseline start none → 2015-10-05; baseline finish none → 2015-10-06 |
| 24 | Melakukan pelatihan kepada user |  |  |  |  | baseline start none → 2015-10-05; baseline finish none → 2015-10-06 |
| 25 | **Dokumentasi** |  |  |  |  | baseline start none → 2015-06-29; baseline finish none → 2015-10-12 |
| 26 | Desain Spesifikasi Sistem |  |  |  |  | baseline start none → 2015-06-29; baseline finish none → 2015-07-23 |
| 27 | Dokumentasi SOP |  |  |  |  | baseline start none → 2015-07-24; baseline finish none → 2015-08-06 |
| 28 | Dokumen Administrasi Proyek |  |  |  |  | baseline start none → 2015-08-07; baseline finish none → 2015-08-19 |
| 29 | User dan Admin Manual + Dok. Program |  |  |  |  | baseline start none → 2015-08-20; baseline finish none → 2015-09-23 |
| 30 | Dokumen Manajemen Proyek |  |  |  |  | baseline start none → 2015-09-25; baseline finish none → 2015-10-12 |
| 31 | **Maintenance** |  |  |  |  | baseline start none → 2015-10-07; baseline finish none → 2015-11-04 |
| 32 | Pemeliharaan & Perbaikan Sistem |  |  |  |  | baseline start none → 2015-10-07; baseline finish none → 2015-11-04 |
| 33 | **Administrasi** |  |  |  |  | baseline start none → 2015-06-12; baseline finish none → 2015-10-12 |
| 34 | Melakukan administrasi proyek & mendokumentasikannya |  |  |  |  | baseline start none → 2015-06-12; baseline finish none → 2015-10-12 |

## Version 4 (saved 2015-09-29, file RAB PROYEK 2015 - PRINT.mpp)

Note of the change: ok

Last finish stays 2015-11-04. Complete tasks 10 → 0.

Changed:

| ID | Task | Start | Finish | Complete | Total float | Other |
| --- | --- | --- | --- | --- | --- | --- |
| 1 | **Analisis dan Desain Sistem** | 2015-06-15 A → 2015-06-15 | 2015-06-25 A → 2015-06-25 | 100% → 0% | none → 0d | baseline start 2015-06-15 → none; baseline finish 2015-06-25 → none |
| 2 | Menganalisis Sistem Kepegawaian dengan melakukan wawancara kepada pihak yang ditunjuk | 2015-06-15 A → 2015-06-15 | 2015-06-16 A → 2015-06-16 | 100% → 0% |  | baseline start 2015-06-15 → none; baseline finish 2015-06-16 → none |
| 3 | Membuat Statement of Purpose, Event List, dan Context Diagram | 2015-06-17 A → 2015-06-17 | 2015-06-17 A → 2015-06-17 | 100% → 0% |  | baseline start 2015-06-17 → none; baseline finish 2015-06-17 → none |
| 4 | Membuat Data Flow Diagram (DFD) Levelled | 2015-06-18 A → 2015-06-18 | 2015-06-18 A → 2015-06-18 | 100% → 0% |  | baseline start 2015-06-18 → none; baseline finish 2015-06-18 → none |
| 5 | Membuat Kamus Data | 2015-06-19 A → 2015-06-19 | 2015-06-19 A → 2015-06-19 | 100% → 0% |  | baseline start 2015-06-19 → none; baseline finish 2015-06-19 → none |
| 6 | Membuat Process Specification | 2015-06-22 A → 2015-06-22 | 2015-06-22 A → 2015-06-22 | 100% → 0% |  | baseline start 2015-06-22 → none; baseline finish 2015-06-22 → none |
| 7 | Membuat Entity Relationship Diagram (ERD) | 2015-06-23 A → 2015-06-23 | 2015-06-23 A → 2015-06-23 | 100% → 0% |  | baseline start 2015-06-23 → none; baseline finish 2015-06-23 → none |
| 8 | Dokumentasi Analisis & Desain Sistem | 2015-06-24 A → 2015-06-24 | 2015-06-25 A → 2015-06-25 | 100% → 0% |  | baseline start 2015-06-24 → none; baseline finish 2015-06-25 → none |
| 9 | **Desain Aplikasi** | 2015-06-29 A → 2015-06-29 | 2015-07-07 A → 2015-07-07 | 100% → 0% | none → 0d | baseline start 2015-06-29 → none; baseline finish 2015-07-07 → none |
| 10 | Membuat Desain Menu Aplikasi + Form Entry | 2015-06-29 A → 2015-06-29 | 2015-06-30 A → 2015-06-30 | 100% → 0% |  | baseline start 2015-06-29 → none; baseline finish 2015-06-30 → none |
| 11 | Membuat Desain Report + Form Report | 2015-07-01 A → 2015-07-01 | 2015-07-02 A → 2015-07-02 | 100% → 0% |  | baseline start 2015-07-01 → none; baseline finish 2015-07-02 → none |
| 12 | Dokumentasi Desain Aplikasi | 2015-07-03 A → 2015-07-03 | 2015-07-07 A → 2015-07-07 | 100% → 0% |  | baseline start 2015-07-03 → none; baseline finish 2015-07-07 → none |
| 13 | **Programming** | 2015-07-08 A → 2015-07-08 |  | 80% → 0% |  | baseline start 2015-07-08 → none; baseline finish 2015-09-30 → none |
| 14 | Programming (Back End & Front End) | 2015-07-08 A → 2015-07-08 |  | 88% → 0% |  | baseline start 2015-07-08 → none; baseline finish 2015-09-22 → none |
| 15 | Dokumentasi program (Back End & Front End) |  |  |  |  | baseline start 2015-09-23 → none; baseline finish 2015-09-30 → none |
| 16 | **Testing Program** |  |  |  |  | baseline start 2015-09-23 → none; baseline finish 2015-09-30 → none |
| 17 | Melakukan test terhadap program |  |  |  |  | baseline start 2015-09-23 → none; baseline finish 2015-09-25 → none |
| 18 | Memberikan catatan list perbaikan |  |  |  |  | baseline start 2015-09-28 → none; baseline finish 2015-09-28 → none |
| 19 | Dokumentasi testing program |  |  |  |  | baseline start 2015-09-29 → none; baseline finish 2015-09-30 → none |
| 20 | **Instalasi Program** |  |  |  |  | baseline start 2015-10-01 → none; baseline finish 2015-10-02 → none |
| 21 | Setting infrastruktur & software pendukung |  |  |  |  | baseline start 2015-10-01 → none; baseline finish 2015-10-01 → none |
| 22 | Instalasi program ke komputer user |  |  |  |  | baseline start 2015-10-02 → none; baseline finish 2015-10-02 → none |
| 23 | **Training User / SDM** |  |  |  |  | baseline start 2015-10-05 → none; baseline finish 2015-10-06 → none |
| 24 | Melakukan pelatihan kepada user |  |  |  |  | baseline start 2015-10-05 → none; baseline finish 2015-10-06 → none |
| 25 | **Dokumentasi** |  |  |  |  | baseline start 2015-06-29 → none; baseline finish 2015-10-12 → none |
| 26 | Desain Spesifikasi Sistem |  |  |  |  | baseline start 2015-06-29 → none; baseline finish 2015-07-23 → none |
| 27 | Dokumentasi SOP |  |  |  |  | baseline start 2015-07-24 → none; baseline finish 2015-08-06 → none |
| 28 | Dokumen Administrasi Proyek |  |  |  |  | baseline start 2015-08-07 → none; baseline finish 2015-08-19 → none |
| 29 | User dan Admin Manual + Dok. Program |  |  |  |  | baseline start 2015-08-20 → none; baseline finish 2015-09-23 → none |
| 30 | Dokumen Manajemen Proyek |  |  |  |  | baseline start 2015-09-25 → none; baseline finish 2015-10-12 → none |
| 31 | **Maintenance** |  |  |  |  | baseline start 2015-10-07 → none; baseline finish 2015-11-04 → none |
| 32 | Pemeliharaan & Perbaikan Sistem |  |  |  |  | baseline start 2015-10-07 → none; baseline finish 2015-11-04 → none |
| 33 | **Administrasi** |  |  |  |  | baseline start 2015-06-12 → none; baseline finish 2015-10-12 → none |
| 34 | Melakukan administrasi proyek & mendokumentasikannya |  |  |  |  | baseline start 2015-06-12 → none; baseline finish 2015-10-12 → none |
| 35 | **Biaya Lain-lain** |  |  |  |  | baseline start 2015-06-15 → none; baseline finish 2015-06-15 → none |
| 36 | Biaya Bahan & Pencetakan |  |  |  |  | baseline start 2015-06-15 → none; baseline finish 2015-06-15 → none |
| 37 | Perubahan Analisis (bila diperlukan) |  |  |  |  | baseline start 2015-06-15 → none; baseline finish 2015-06-15 → none |
| 38 | Perubahan Bentuk Desain |  |  |  |  | baseline start 2015-06-15 → none; baseline finish 2015-06-15 → none |
| 39 | Penambahan Program (bila diperlukan) |  |  |  |  | baseline start 2015-06-15 → none; baseline finish 2015-06-15 → none |
| 40 | Biaya Cadangan Operasional |  |  |  |  | baseline start 2015-06-15 → none; baseline finish 2015-06-15 → none |
| 41 | Biaya Cadangan Tak Terduga |  |  |  |  | baseline start 2015-06-15 → none; baseline finish 2015-06-15 → none |
| 42 | Biaya Finger Print & Infrastruktur lainnya |  |  |  |  | baseline start 2015-06-15 → none; baseline finish 2015-06-15 → none |

## Version 5 (saved 2015-09-29, file KEMAJUAN1 PROYEK 2015 - PRINT2.mpp)

Note of the change: ok

Last finish stays 2015-11-04. Complete tasks 0 → 10.

Changed:

| ID | Task | Start | Finish | Complete | Total float | Other |
| --- | --- | --- | --- | --- | --- | --- |
| 1 | **Analisis dan Desain Sistem** | 2015-06-15 A | 2015-06-25 A | 0% → 100% | 0d → none | baseline start none → 2015-06-15; baseline finish none → 2015-06-25 |
| 2 | Menganalisis Sistem Kepegawaian dengan melakukan wawancara kepada pihak yang ditunjuk | 2015-06-15 A | 2015-06-16 A | 0% → 100% |  | baseline start none → 2015-06-15; baseline finish none → 2015-06-16 |
| 3 | Membuat Statement of Purpose, Event List, dan Context Diagram | 2015-06-17 A | 2015-06-17 A | 0% → 100% |  | baseline start none → 2015-06-17; baseline finish none → 2015-06-17 |
| 4 | Membuat Data Flow Diagram (DFD) Levelled | 2015-06-18 A | 2015-06-18 A | 0% → 100% |  | baseline start none → 2015-06-18; baseline finish none → 2015-06-18 |
| 5 | Membuat Kamus Data | 2015-06-19 A | 2015-06-19 A | 0% → 100% |  | baseline start none → 2015-06-19; baseline finish none → 2015-06-19 |
| 6 | Membuat Process Specification | 2015-06-22 A | 2015-06-22 A | 0% → 100% |  | baseline start none → 2015-06-22; baseline finish none → 2015-06-22 |
| 7 | Membuat Entity Relationship Diagram (ERD) | 2015-06-23 A | 2015-06-23 A | 0% → 100% |  | baseline start none → 2015-06-23; baseline finish none → 2015-06-23 |
| 8 | Dokumentasi Analisis & Desain Sistem | 2015-06-24 A | 2015-06-25 A | 0% → 100% |  | baseline start none → 2015-06-24; baseline finish none → 2015-06-25 |
| 9 | **Desain Aplikasi** | 2015-06-29 A | 2015-07-07 A | 0% → 100% | 0d → none | baseline start none → 2015-06-29; baseline finish none → 2015-07-07 |
| 10 | Membuat Desain Menu Aplikasi + Form Entry | 2015-06-29 A | 2015-06-30 A | 0% → 100% |  | baseline start none → 2015-06-29; baseline finish none → 2015-06-30 |
| 11 | Membuat Desain Report + Form Report | 2015-07-01 A | 2015-07-02 A | 0% → 100% |  | baseline start none → 2015-07-01; baseline finish none → 2015-07-02 |
| 12 | Dokumentasi Desain Aplikasi | 2015-07-03 A | 2015-07-07 A | 0% → 100% |  | baseline start none → 2015-07-03; baseline finish none → 2015-07-07 |
| 13 | **Programming** | 2015-07-08 A |  | 0% → 80% |  | baseline start none → 2015-07-08; baseline finish none → 2015-09-30 |
| 14 | Programming (Back End & Front End) | 2015-07-08 A |  | 0% → 88% |  | baseline start none → 2015-07-08; baseline finish none → 2015-09-22 |
| 15 | Dokumentasi program (Back End & Front End) |  |  |  |  | baseline start none → 2015-09-23; baseline finish none → 2015-09-30 |
| 16 | **Testing Program** |  |  |  |  | baseline start none → 2015-09-23; baseline finish none → 2015-09-30 |
| 17 | Melakukan test terhadap program |  |  |  |  | baseline start none → 2015-09-23; baseline finish none → 2015-09-25 |
| 18 | Memberikan catatan list perbaikan |  |  |  |  | baseline start none → 2015-09-28; baseline finish none → 2015-09-28 |
| 19 | Dokumentasi testing program |  |  |  |  | baseline start none → 2015-09-29; baseline finish none → 2015-09-30 |
| 20 | **Instalasi Program** |  |  |  |  | baseline start none → 2015-10-01; baseline finish none → 2015-10-02 |
| 21 | Setting infrastruktur & software pendukung |  |  |  |  | baseline start none → 2015-10-01; baseline finish none → 2015-10-01 |
| 22 | Instalasi program ke komputer user |  |  |  |  | baseline start none → 2015-10-02; baseline finish none → 2015-10-02 |
| 23 | **Training User / SDM** |  |  |  |  | baseline start none → 2015-10-05; baseline finish none → 2015-10-06 |
| 24 | Melakukan pelatihan kepada user |  |  |  |  | baseline start none → 2015-10-05; baseline finish none → 2015-10-06 |
| 25 | **Dokumentasi** |  |  |  |  | baseline start none → 2015-06-29; baseline finish none → 2015-10-12 |
| 26 | Desain Spesifikasi Sistem |  |  |  |  | baseline start none → 2015-06-29; baseline finish none → 2015-07-23 |
| 27 | Dokumentasi SOP |  |  |  |  | baseline start none → 2015-07-24; baseline finish none → 2015-08-06 |
| 28 | Dokumen Administrasi Proyek |  |  |  |  | baseline start none → 2015-08-07; baseline finish none → 2015-08-19 |
| 29 | User dan Admin Manual + Dok. Program |  |  |  |  | baseline start none → 2015-08-20; baseline finish none → 2015-09-23 |
| 30 | Dokumen Manajemen Proyek |  |  |  |  | baseline start none → 2015-09-25; baseline finish none → 2015-10-12 |
| 31 | **Maintenance** |  |  |  |  | baseline start none → 2015-10-07; baseline finish none → 2015-11-04 |
| 32 | Pemeliharaan & Perbaikan Sistem |  |  |  |  | baseline start none → 2015-10-07; baseline finish none → 2015-11-04 |
| 33 | **Administrasi** |  |  |  |  | baseline start none → 2015-06-12; baseline finish none → 2015-10-12 |
| 34 | Melakukan administrasi proyek & mendokumentasikannya |  |  |  |  | baseline start none → 2015-06-12; baseline finish none → 2015-10-12 |
| 35 | **Biaya Lain-lain** |  |  |  |  | baseline start none → 2015-06-15; baseline finish none → 2015-06-15 |
| 36 | Biaya Bahan & Pencetakan |  |  |  |  | baseline start none → 2015-06-15; baseline finish none → 2015-06-15 |
| 37 | Perubahan Analisis (bila diperlukan) |  |  |  |  | baseline start none → 2015-06-15; baseline finish none → 2015-06-15 |
| 38 | Perubahan Bentuk Desain |  |  |  |  | baseline start none → 2015-06-15; baseline finish none → 2015-06-15 |
| 39 | Penambahan Program (bila diperlukan) |  |  |  |  | baseline start none → 2015-06-15; baseline finish none → 2015-06-15 |
| 40 | Biaya Cadangan Operasional |  |  |  |  | baseline start none → 2015-06-15; baseline finish none → 2015-06-15 |
| 41 | Biaya Cadangan Tak Terduga |  |  |  |  | baseline start none → 2015-06-15; baseline finish none → 2015-06-15 |
| 42 | Biaya Finger Print & Infrastruktur lainnya |  |  |  |  | baseline start none → 2015-06-15; baseline finish none → 2015-06-15 |
